# Edifício Administrativo TMULT - Porto do Açu

How a schedule from MS Project XML changed from version to version. A marks actual dates.

## Version 1 (saved 2026-09-10)

Note of the change: feat(tmult): consolidar linha de base 01, cronograma físico-financeiro, histogramas e propostas comercial e técnica

| ID | Task | Duration | Start | Finish | Predecessors |
| --- | --- | --- | --- | --- | --- |
| 1 | OBRA TMULT - EDIFÍCIO ADMINISTRATIVO (180 DIAS) | 180d | 2026-10-01 | 2027-03-30 |  |
| 2 | A01 MOB CANTEIRO | 10d | 2026-10-01 | 2026-10-11 |  |
| 3 | A02 ESCAV INFRA | 6d | 2026-10-11 | 2026-10-17 | 2 |
| 4 | A03 SAPATAS CONC | 7d | 2026-10-17 | 2026-10-24 | 3 |
| 5 | A04 BALDRAMES CONC | 8d | 2026-10-24 | 2026-11-01 | 4 |
| 6 | A05 IMPERM BALDRAME | 3d | 2026-10-24 | 2026-10-27 | 5 |
| 7 | A06 REATERRO INFRA | 3d | 2026-10-24 | 2026-10-27 | 6 |
| 8 | A07 PILARES SUPRA | 9d | 2026-10-24 | 2026-11-02 | 7 |
| 9 | A08 VIGAS LAJE FORMA | 8d | 2026-10-24 | 2026-11-01 | 8 |
| 10 | A09 CONCRET LAJE H12 | 1d | 2026-10-24 | 2026-10-25 | 9 |
| 11 | A10 CURA DESFORMA | 12d | 2026-10-24 | 2026-11-05 | 10 |
| 12 | A11 ESTRUT TERCAS COB | 10d | 2026-10-24 | 2026-11-03 | 11 |
| 13 | A12 ALVENARIA VEDACAO | 20d | 2026-10-24 | 2026-11-13 | 11 |
| 14 | A13 TELHAS SANDWICH PLAT | 10d | 2026-10-24 | 2026-11-03 | 12, 13 |
| 15 | A14 ELET EMBUTIDA | 10d | 2026-10-24 | 2026-11-03 | 14 |
| 16 | A15 HIDR EMBUTIDA | 10d | 2026-10-24 | 2026-11-03 | 14 |
| 17 | A16 TESTE HIDROSTATICO 72H | 3d | 2026-10-24 | 2026-10-27 | 16 |
| 18 | A17 EMBOCO REBOCO | 14d | 2026-10-24 | 2026-11-07 | 17, 15 |
| 19 | A18 IMPERM WCS | 3d | 2026-10-24 | 2026-10-27 | 18 |
| 20 | A19 CONTRAPISO | 6d | 2026-10-24 | 2026-10-30 | 18 |
| 21 | A20 INFRA DUTOS HVAC | 10d | 2026-10-24 | 2026-11-03 | 18 |
| 22 | A21 ESQUADRIAS FIX | 8d | 2026-10-24 | 2026-11-01 | 18 |
| 23 | A22 PISO PORCELANATO | 14d | 2026-10-24 | 2026-11-07 | 20, 19 |
| 24 | A23 FIACAO TELECOM | 10d | 2026-10-24 | 2026-11-03 | 18 |
| 25 | A24 RODAPES ACAB | 4d | 2026-10-24 | 2026-10-28 | 23 |
| 26 | A25 PINTURA 1A DEMAO | 5d | 2026-10-24 | 2026-10-29 | 25, 21, 22, 24 |
| 27 | A26 APARELHOS HVAC | 6d | 2026-10-24 | 2026-10-30 | 26 |
| 28 | A27 LOUCAS METAIS | 6d | 2026-10-24 | 2026-10-30 | 26 |
| 29 | A28 LUMINARIAS ESPELHOS | 5d | 2026-10-24 | 2026-10-29 | 26 |
| 30 | A29 PINTURA FINAL | 7d | 2026-10-24 | 2026-10-31 | 27, 28, 29 |
| 31 | A30 COMISSIONAMENTO | 6d | 2026-10-24 | 2026-10-30 | 30 |
| 32 | A31 LIMPEZA ENTREGA | 6d | 2026-10-24 | 2026-10-30 | 31 |

## Version 2 (saved 2026-09-11)

Note of the change: feat(core): universalizacao multi-obras completa dos 13 motores e higienizacao de scripts

Last finish 2027-03-30 → 2027-04-09 (+10d).

Changed:

| ID | Task | Start | Finish | Other |
| --- | --- | --- | --- | --- |
| 1 | OBRA TMULT (180 DIAS) |  |  | was named OBRA TMULT - EDIFÍCIO ADMINISTRATIVO (180 DIAS) |
| 6 | A05 IMPERM BALDRAME | 2026-10-24 → 2026-11-01 (+8d) | 2026-10-27 → 2026-11-04 (+8d) |  |
| 7 | A06 REATERRO INFRA | 2026-10-24 → 2026-11-04 (+11d) | 2026-10-27 → 2026-11-07 (+11d) |  |
| 8 | A07 PILARES SUPRA | 2026-10-24 → 2026-11-07 (+14d) | 2026-11-02 → 2026-11-16 (+14d) |  |
| 9 | A08 VIGAS LAJE FORMA | 2026-10-24 → 2026-11-16 (+23d) | 2026-11-01 → 2026-11-24 (+23d) |  |
| 10 | A09 CONCRET LAJE H12 | 2026-10-24 → 2026-11-24 (+31d) | 2026-10-25 → 2026-11-25 (+31d) |  |
| 11 | A10 CURA DESFORMA | 2026-10-24 → 2026-11-25 (+32d) | 2026-11-05 → 2026-12-07 (+32d) |  |
| 12 | A11 ESTRUT TERCAS COB | 2026-10-24 → 2026-12-07 (+44d) | 2026-11-03 → 2026-12-17 (+44d) |  |
| 13 | A12 ALVENARIA VEDACAO | 2026-10-24 → 2026-12-17 (+54d) | 2026-11-13 → 2027-01-06 (+54d) |  |
| 14 | A13 TELHAS SANDWICH PLAT | 2026-10-24 → 2027-01-06 (+74d) | 2026-11-03 → 2027-01-16 (+74d) |  |
| 15 | A14 ELET EMBUTIDA | 2026-10-24 → 2027-01-06 (+74d) | 2026-11-03 → 2027-01-16 (+74d) |  |
| 16 | A15 HIDR EMBUTIDA | 2026-10-24 → 2027-01-16 (+84d) | 2026-11-03 → 2027-01-26 (+84d) |  |
| 17 | A16 TESTE HIDROSTATICO 72H | 2026-10-24 → 2027-01-26 (+94d) | 2026-10-27 → 2027-01-29 (+94d) |  |
| 18 | A17 EMBOCO REBOCO | 2026-10-24 → 2027-01-29 (+97d) | 2026-11-07 → 2027-02-12 (+97d) |  |
| 19 | A18 IMPERM WCS | 2026-10-24 → 2027-01-29 (+97d) | 2026-10-27 → 2027-02-01 (+97d) |  |
| 20 | A19 CONTRAPISO | 2026-10-24 → 2027-02-01 (+100d) | 2026-10-30 → 2027-02-07 (+100d) |  |
| 21 | A20 INFRA DUTOS HVAC | 2026-10-24 → 2027-02-07 (+106d) | 2026-11-03 → 2027-02-17 (+106d) |  |
| 22 | A21 ESQUADRIAS FIX | 2026-10-24 → 2027-02-17 (+116d) | 2026-11-01 → 2027-02-25 (+116d) |  |
| 23 | A22 PISO PORCELANATO | 2026-10-24 → 2027-02-25 (+124d) | 2026-11-07 → 2027-03-11 (+124d) |  |
| 24 | A23 FIACAO TELECOM | 2026-10-24 → 2027-02-25 (+124d) | 2026-11-03 → 2027-03-07 (+124d) |  |
| 25 | A24 RODAPES ACAB | 2026-10-24 → 2027-03-07 (+134d) | 2026-10-28 → 2027-03-11 (+134d) |  |
| 26 | A25 PINTURA 1A DEMAO | 2026-10-24 → 2027-03-11 (+138d) | 2026-10-29 → 2027-03-16 (+138d) |  |
| 27 | A26 APARELHOS HVAC | 2026-10-24 → 2027-03-11 (+138d) | 2026-10-30 → 2027-03-17 (+138d) |  |
| 28 | A27 LOUCAS METAIS | 2026-10-24 → 2027-03-17 (+144d) | 2026-10-30 → 2027-03-23 (+144d) |  |
| 29 | A28 LUMINARIAS ESPELHOS | 2026-10-24 → 2027-03-23 (+150d) | 2026-10-29 → 2027-03-28 (+150d) |  |
| 30 | A29 PINTURA FINAL | 2026-10-24 → 2027-03-28 (+155d) | 2026-10-31 → 2027-04-04 (+155d) |  |
| 31 | A30 COMISSIONAMENTO | 2026-10-24 → 2027-03-28 (+155d) | 2026-10-30 → 2027-04-03 (+155d) |  |
| 32 | A31 LIMPEZA ENTREGA | 2026-10-24 → 2027-04-03 (+161d) | 2026-10-30 → 2027-04-09 (+161d) |  |

## Version 3 (saved 2026-09-13)

Note of the change: ATENÇÃO FASE 3 - REFATORADO PLANEJAMENTO

Last finish stays 2027-04-09.

Changed:

| ID | Task | Other |
| --- | --- | --- |
| 1 | TMULT — TERMINAL MULTIUSO (PORTO DO AÇU) — EDIFÍCIO ADMINISTRATIVO (180 DIAS) | was named OBRA TMULT (180 DIAS) |

## Version 4 (saved 2026-09-14)

Note of the change: feat(planejamento): implantacao da Fonte Unica da Verdade (SSOT) em JSON e motor compilar_planejamento

Last finish 2027-04-09 → 2027-02-10 (-58d).

Changed:

| ID | Task | Start | Finish | Duration | Total float | Other |
| --- | --- | --- | --- | --- | --- | --- |
| 1 | TMULT — TERMINAL MULTIUSO (PORTO DO AÇU) — EDIFÍCIO ADMINISTRATIVO (132 DIAS CPM) |  | 2027-03-30 → 2027-02-10 (-48d) | 180d → 132d |  | was named TMULT — TERMINAL MULTIUSO (PORTO DO AÇU) — EDIFÍCIO ADMINISTRATIVO (180 DIAS) |
| 2 | A01 MOB CANTEIRO |  | 2026-10-11 → 2026-10-08 (-3d) | 10d → 7d | none → 0d |  |
| 3 | A02 ESCAV INFRA | 2026-10-11 → 2026-10-08 (-3d) | 2026-10-17 → 2026-10-12 (-5d) | 6d → 4d | none → 0d |  |
| 4 | A03 SAPATAS CONC | 2026-10-17 → 2026-10-12 (-5d) | 2026-10-24 → 2026-10-17 (-7d) | 7d → 5d | none → 0d |  |
| 5 | A04 BALDRAMES CONC | 2026-10-24 → 2026-10-17 (-7d) | 2026-11-01 → 2026-10-23 (-9d) | 8d → 6d | none → 0d |  |
| 6 | A05 IMPERM BALDRAME | 2026-11-01 → 2026-10-23 (-9d) | 2026-11-04 → 2026-10-25 (-10d) | 3d → 2d | none → 0d |  |
| 7 | A06 REATERRO INFRA | 2026-11-04 → 2026-10-25 (-10d) | 2026-11-07 → 2026-10-27 (-11d) | 3d → 2d | none → 0d |  |
| 8 | A07 PILARES SUPRA | 2026-11-07 → 2026-10-27 (-11d) | 2026-11-16 → 2026-11-03 (-13d) | 9d → 7d | none → 0d |  |
| 9 | A08 VIGAS LAJE FORMA | 2026-11-16 → 2026-11-03 (-13d) | 2026-11-24 → 2026-11-09 (-15d) | 8d → 6d | none → 0d |  |
| 10 | A09 CONCRET LAJE H12 | 2026-11-24 → 2026-11-09 (-15d) | 2026-11-25 → 2026-11-10 (-15d) |  | none → 0d |  |
| 11 | A10 CURA DESFORMA | 2026-11-25 → 2026-11-10 (-15d) | 2026-12-07 → 2026-11-22 (-15d) |  | none → 0d |  |
| 12 | A11 ESTRUT TERCAS COB | 2026-12-07 → 2026-11-22 (-15d) | 2026-12-17 → 2026-11-29 (-18d) | 10d → 7d | none → 0.8d |  |
| 13 | A12 ALVENARIA VEDACAO | 2026-12-17 → 2026-11-22 (-25d) | 2027-01-06 → 2026-12-07 (-30d) | 20d → 15d | none → 0d |  |
| 14 | A13 TELHAS SANDWICH PLAT | 2027-01-06 → 2026-12-07 (-30d) | 2027-01-16 → 2026-12-14 (-33d) | 10d → 7d | none → 0d |  |
| 15 | A14 ELET EMBUTIDA | 2027-01-06 → 2026-12-14 (-23d) | 2027-01-16 → 2026-12-21 (-26d) | 10d → 7d | none → 0.2d |  |
| 16 | A15 HIDR EMBUTIDA | 2027-01-16 → 2026-12-14 (-33d) | 2027-01-26 → 2026-12-21 (-36d) | 10d → 7d | none → 0d |  |
| 17 | A16 TESTE HIDROSTATICO 72H | 2027-01-26 → 2026-12-21 (-36d) | 2027-01-29 → 2026-12-23 (-37d) | 3d → 2d | none → 0d |  |
| 18 | A17 EMBOCO REBOCO | 2027-01-29 → 2026-12-23 (-37d) | 2027-02-12 → 2027-01-02 (-41d) | 14d → 10d | none → 0d |  |
| 19 | A18 IMPERM WCS | 2027-01-29 → 2027-01-02 (-27d) | 2027-02-01 → 2027-01-04 (-28d) | 3d → 2d | none → 0.2d |  |
| 20 | A19 CONTRAPISO | 2027-02-01 → 2027-01-02 (-30d) | 2027-02-07 → 2027-01-06 (-32d) | 6d → 4d | none → 0d |  |
| 21 | A20 INFRA DUTOS HVAC | 2027-02-07 → 2027-01-02 (-36d) | 2027-02-17 → 2027-01-09 (-39d) | 10d → 7d | none → 1d |  |
| 22 | A21 ESQUADRIAS FIX | 2027-02-17 → 2027-01-02 (-46d) | 2027-02-25 → 2027-01-08 (-48d) | 8d → 6d | none → 1.1d |  |
| 23 | A22 PISO PORCELANATO | 2027-02-25 → 2027-01-06 (-50d) | 2027-03-11 → 2027-01-16 (-54d) | 14d → 10d | none → 0d |  |
| 24 | A23 FIACAO TELECOM | 2027-02-25 → 2027-01-02 (-54d) | 2027-03-07 → 2027-01-09 (-57d) | 10d → 7d | none → 1d |  |
| 25 | A24 RODAPES ACAB | 2027-03-07 → 2027-01-16 (-50d) | 2027-03-11 → 2027-01-19 (-51d) | 4d → 3d | none → 0d |  |
| 26 | A25 PINTURA 1A DEMAO | 2027-03-11 → 2027-01-19 (-51d) | 2027-03-16 → 2027-01-23 (-52d) | 5d → 4d | none → 0d |  |
| 27 | A26 APARELHOS HVAC | 2027-03-11 → 2027-01-23 (-47d) | 2027-03-17 → 2027-01-27 (-49d) | 6d → 4d | none → 0d |  |
| 28 | A27 LOUCAS METAIS | 2027-03-17 → 2027-01-23 (-53d) | 2027-03-23 → 2027-01-27 (-55d) | 6d → 4d | none → 0d |  |
| 29 | A28 LUMINARIAS ESPELHOS | 2027-03-23 → 2027-01-23 (-59d) | 2027-03-28 → 2027-01-27 (-60d) | 5d → 4d | none → 0d |  |
| 30 | A29 PINTURA FINAL | 2027-03-28 → 2027-01-27 (-60d) | 2027-04-04 → 2027-02-01 (-62d) | 7d → 5d | none → 0d |  |
| 31 | A30 COMISSIONAMENTO | 2027-03-28 → 2027-02-01 (-55d) | 2027-04-03 → 2027-02-05 (-57d) | 6d → 4d | none → 0d |  |
| 32 | A31 LIMPEZA ENTREGA | 2027-04-03 → 2027-02-05 (-57d) | 2027-04-09 → 2027-02-10 (-58d) | 6d → 5d | none → 0d |  |
